# Biobank2

Schedule from Planner, 2009-05-19 to 2009-11-18.

## Calendars

- Default: Mon-Fri 08:00-12:00, 13:00-17:00; Sat-Sun off.

## Resources

| Resource |
| --- |
| Programmer 1 |
| Programmer 2 |

## Schedule

| ID | WBS | Task | Type | Duration | Start | Finish | Predecessors | Resources | Work |
| --- | --- | --- | --- | --- | --- | --- | --- | --- | --- |
| 1 | 1 | **Version 1.0** |  |  | 2009-05-19 | 2009-07-29 |  |  | 760h |
| 2 | 1.1 | Finish current forms |  |  | 2009-05-19 | 2009-05-25 |  | Programmer 1 | 40h |
| 3 | 1.2 | datamatrix decoding library |  |  | 2009-05-26 | 2009-06-08 | 2 | Programmer 1 | 80h |
| 4 | 1.3 | Export data from BBPDB and import to Biobank2 |  |  | 2009-06-09 | 2009-06-29 | 3 | Programmer 1 | 120h |
| 5 | 1.4 | parse xml for possible servers |  |  | 2009-06-30 | 2009-06-30 | 4 | Programmer 1 | 8h |
| 6 | 1.5 | Log out when no activity detected on java client |  |  | 2009-07-01 | 2009-07-01 | 5 | Programmer 1 | 8h |
| 7 | 1.6 | cascade settings |  |  | 2009-07-02 | 2009-07-08 | 6 | Programmer 1 | 40h |
| 8 | 1.7 | enable logging capability |  |  | 2009-07-09 | 2009-07-15 | 7 | Programmer 1 | 40h |
| 9 | 1.8 | Unit and feature test suite |  |  | 2009-07-16 | 2009-07-29 | 8 | Programmer 1 | 80h |
| 10 | 1.9 | update button for view forms |  |  | 2009-05-19 | 2009-05-19 |  | Programmer 2 | 8h |
| 11 | 1.10 | **scanner integration** |  |  | 2009-05-20 | 2009-06-30 |  | Programmer 2 | 240h |
| 12 | 1.10.1 | Implement scan link |  |  | 2009-05-20 | 2009-06-02 | 10 | Programmer 2 | 80h |
| 13 | 1.10.2 | Implement scan process |  |  | 2009-06-03 | 2009-06-09 | 12 | Programmer 2 | 40h |
| 14 | 1.10.3 | Integrate datamatrix decoding library |  |  | 2009-06-10 | 2009-06-16 | 3, 13 | Programmer 2 | 40h |
| 15 | 1.10.4 | 1D barcode scanning |  |  | 2009-06-17 | 2009-06-23 | 14 | Programmer 2 | 40h |
| 16 | 1.10.5 | hand held scanner integration |  |  | 2009-06-24 | 2009-06-30 | 15 | Programmer 2 | 40h |
| 17 | 1.11 | java client search feature |  |  | 2009-07-01 | 2009-07-14 | 11 | Programmer 2 | 80h |
| 18 | 1.12 | **CSM user authentication** |  |  | 2009-07-15 | 2009-07-16 |  | Programmer 2 | 16h |
| 19 | 1.12.1 | user roles |  |  | 2009-07-15 | 2009-07-16 | 17 | Programmer 2 | 16h |
| 20 | 2 | Version 1.0 Ready | milestone | 0d | 2009-07-29 | 2009-07-29 | 18, 1 |  |  |
| 21 | 3 | **Version 1.1** |  |  | 2009-07-30 | 2009-09-30 | 20 |  | 360h |
| 22 | 3.1 | Web client data presentation |  |  | 2009-07-30 | 2009-08-12 |  |  | 80h |
| 23 | 3.2 | Web client search |  |  | 2009-08-13 | 2009-08-26 | 22 |  | 80h |
| 24 | 3.3 | Model modifications to include orders and distribution |  |  | 2009-08-27 | 2009-09-02 | 23 |  | 40h |
| 25 | 3.4 | Web Orders |  |  | 2009-09-03 | 2009-09-09 | 24 |  | 40h |
| 26 | 3.5 | Order distribution |  |  | 2009-09-10 | 2009-09-16 | 25 |  | 40h |
| 27 | 3.6 | Implement orders and distribution on java client |  |  | 2009-09-17 | 2009-09-30 | 26 |  | 80h |
| 28 | 4 | Version 1.1 Ready | milestone | 0d | 2009-09-30 | 2009-09-30 | 21 |  |  |

| ID | WBS | Task | Type | Duration | Start | Finish | Predecessors | Work |
| --- | --- | --- | --- | --- | --- | --- | --- | --- |
| 29 | 5 | **Version 2.0** |  |  | 2009-10-01 | 2009-11-18 | 28 | 280h |
| 30 | 5.1 | Model modifications to include shipping |  |  | 2009-10-01 | 2009-10-07 |  | 40h |
| 31 | 5.2 | Shipment processing |  |  | 2009-10-08 | 2009-10-21 | 30 | 80h |
| 32 | 5.3 | Integrate Robot Arm |  |  | 2009-10-22 | 2009-11-04 | 31 | 80h |
| 33 | 5.4 | Integrate Freezer Robot |  |  | 2009-11-05 | 2009-11-18 | 32 | 80h |
| 34 | 6 | Version 2.0 Ready | milestone | 0d | 2009-11-18 | 2009-11-18 | 29 |  |
